# Roverside Assistance.xml

Schedule from MS Project XML, 2017-10-24 to 2017-12-12, A marks actual dates.

## Calendars

- Standard: Mon-Fri 08:00-12:00, 13:00-17:00; Sat-Sun off.

## Resources

| Resource | Group | Notes |
| --- | --- | --- |
| Unassigned |  |  |
| Daniel Arnett | The Moon Wreckers | Email: darnett@andrew.cmu.edu Phone: (412) 268-3818 |
| Karthik Paga | The Moon Wreckers |  |
| Dicong Qiu | The Moon Wreckers |  |
| Matthew Swenson | The Moon Wreckers |  |
| Abdul Zafar | The Moon Wreckers |  |
| Eugene Fang | Cool Guys |  |

## Schedule

| ID | WBS | Task | Duration | Start | Finish | Predecessors | Complete | Remaining | Total slack | Free slack | Constraint | Resources | Work | Actual work |
| --- | --- | --- | --- | --- | --- | --- | --- | --- | --- | --- | --- | --- | --- | --- |
| 1 | 1 | **Mechanical** | 4d | 2017-10-26 A | 2017-10-31 |  | 30% | 2.8d | 29d |  | start no earlier than 2017-10-26 |  | 112h | 32h |
| 2 | 1.1 | Machine Magnet Mount | 1d | 2017-10-26 | 2017-10-26 |  |  |  | 30d | 0d |  | Karthik Paga; Matthew Swenson | 16h |  |
| 3 | 1.2 | Machine Motor Guards | 1d | 2017-10-26 A | 2017-10-26 A |  | 100% |  |  |  |  | Karthik Paga; Matthew Swenson | 16h | 16h |
| 4 | 1.3 | Machine Suspension Shaft | 1d | 2017-10-26 | 2017-10-26 |  |  |  | 32d |  |  | Karthik Paga; Matthew Swenson | 16h |  |
| 5 | 1.4 | Machine Magnet Housing | 1d | 2017-10-26 | 2017-10-26 |  |  |  | 32d |  |  | Karthik Paga; Matthew Swenson | 16h |  |
| 6 | 1.5 | Redesign Sensor Mount | 4d | 2017-10-26 | 2017-10-31 |  |  |  | 28d | 0d |  | Matthew Swenson | 32h |  |
| 7 | 1.6 | Design and Build Winch | 2d | 2017-10-26 A | 2017-10-27 A |  | 100% |  |  |  |  | Matthew Swenson | 16h | 16h |
| 8 | 2 | **Electronical** | 3d? | 2017-10-26 A | 2017-10-30 A |  | 100% |  |  |  | start no earlier than 2017-10-26 |  |  |  |
| 9 | 2.1 | Design Power PCB | 3d? | 2017-10-26 A | 2017-10-30 A |  | 100% |  |  |  |  |  |  |  |
| 10 | 3 | **Sensors** | 8d? | 2017-10-24 A | 2017-11-02 |  | 9% | 7.24d? | 27d |  |  |  | 344h | 25.78h |
| 11 | 3.1 | **IMU** | 4d | 2017-10-27 | 2017-11-01 |  |  |  | 28d |  | start no earlier than 2017-10-26 | Daniel Arnett | 32h |  |
| 12 | 3.1.1 | Ask Eugene How to Read IMU Data | 1d | 2017-10-27 | 2017-10-27 |  |  |  | 29d | 0d | start no earlier than 2017-10-27 | Daniel Arnett | 8h |  |
| 13 | 3.1.2 | Install | 1d | 2017-11-01 | 2017-11-01 | 6 |  |  | 28d |  |  |  |  |  |
| 14 | 3.1.3 | Enable | 1d | 2017-10-30 | 2017-10-30 | 12 |  |  | 29d | 0d |  | Daniel Arnett | 8h |  |
| 15 | 3.1.4 | ROS Node | 1d | 2017-10-31 | 2017-10-31 | 14 |  |  | 29d |  |  | Daniel Arnett | 8h |  |
| 16 | 3.2 | **GPS** | 4d | 2017-10-27 A | 2017-11-01 |  | 20% | 3.2d | 28d |  | start no earlier than 2017-10-26 | Daniel Arnett | 40h | 1.6h |
| 17 | 3.2.1 | Ask Eugene How to Read GPS Data | 1d | 2017-10-27 | 2017-10-27 |  |  |  | 28d | 0d | start no earlier than 2017-10-27 | Daniel Arnett | 8h |  |
| 18 | 3.2.2 | Install | 1d | 2017-10-30 A | 2017-10-30 A | 6 | 100% |  |  |  |  |  |  |  |
| 19 | 3.2.3 | Enable | 2d | 2017-10-30 | 2017-10-31 | 17 |  |  | 28d | 0d |  | Daniel Arnett | 16h |  |
| 20 | 3.2.4 | ROS Node | 1d | 2017-11-01 | 2017-11-01 | 19 |  |  | 28d |  |  | Daniel Arnett | 8h |  |
| 21 | 3.3 | **Wheel Motor Encoders** | 3d | 2017-10-26 | 2017-10-30 |  |  |  | 30d |  | start no earlier than 2017-10-26 | Daniel Arnett | 32h |  |
| 22 | 3.3.1 | Install | 1d | 2017-10-26 | 2017-10-26 |  |  |  | 32d |  |  |  |  |  |
| 23 | 3.3.2 | Enable | 2d | 2017-10-26 | 2017-10-27 |  |  |  | 30d | 0d |  | Daniel Arnett | 16h |  |
| 24 | 3.3.3 | ROS Node | 1d | 2017-10-30 | 2017-10-30 | 23 |  |  | 30d |  |  | Daniel Arnett | 8h |  |

Notes:
- 6: not well defined yet, including - machining mount(s) for different sensors - moving GPS - mounting the vive trackers - etc.

| ID | WBS | Task | Duration | Start | Finish | Predecessors | Complete | Remaining | Total slack | Free slack | Constraint | Resources | Work | Actual work |
| --- | --- | --- | --- | --- | --- | --- | --- | --- | --- | --- | --- | --- | --- | --- |
| 25 | 3.4 | **Vive System** | 8d | 2017-10-24 A | 2017-11-02 |  | 22% | 6.22d | 27d |  | start no later than 2017-10-20 | Daniel Arnett | 80h | 17.78h |
| 26 | 3.4.1 | Install | 1d | 2017-11-01 | 2017-11-01 | 6 |  |  | 28d |  |  |  |  |  |
| 27 | 3.4.2 | Enable | 2d | 2017-10-24 A | 2017-10-25 A |  | 100% |  |  |  |  | Daniel Arnett | 16h | 16h |
| 28 | 3.4.3 | **ROS Node** | 6d | 2017-10-26 | 2017-11-02 | 27 |  |  | 27d |  |  | Daniel Arnett | 56h |  |
| 29 | 3.4.3.1 | Pose Estimation | 3d | 2017-10-26 | 2017-10-30 |  |  |  | 27d | 0d |  | Daniel Arnett | 24h |  |
| 30 | 3.4.3.2 | Relative Rover Pose Estimation | 3d | 2017-10-31 | 2017-11-02 | 29 |  |  | 27d |  |  | Daniel Arnett | 24h |  |
| 31 | 3.5 | **Front Camera** | 6d? | 2017-10-26 | 2017-11-02 |  |  |  | 27d |  | start no earlier than 2017-10-26 | Daniel Arnett | 56h |  |
| 32 | 3.5.1 | Install | 1d | 2017-11-01 | 2017-11-01 | 6 |  |  | 28d |  |  |  |  |  |
| 33 | 3.5.2 | Enable | 3d? | 2017-10-26 | 2017-10-30 |  |  |  | 27d | 0d |  | Daniel Arnett | 24h |  |
| 34 | 3.5.3 | ROS Node | 3d? | 2017-10-31 | 2017-11-02 | 33 |  |  | 27d |  |  | Daniel Arnett | 24h |  |
| 35 | 3.6 | **Photograph Camera** | 7d | 2017-10-24 A | 2017-11-01 |  | 6% | 6.6d | 28d |  |  | Daniel Arnett | 104h | 6.4h |
| 36 | 3.6.1 | Install | 1d | 2017-11-01 | 2017-11-01 | 6 |  |  | 28d |  |  |  |  |  |
| 37 | 3.6.2 | Enable | 3d | 2017-10-24 A | 2017-10-26 |  | 13% | 2.6d | 29d | 0d |  | Daniel Arnett | 24h | 3.2h |
| 38 | 3.6.3 | ROS Node | 3d | 2017-10-27 | 2017-10-31 | 37 |  |  | 29d |  |  | Daniel Arnett | 24h |  |
| 39 | 4 | **Actuators** | 7d | 2017-10-24 A | 2017-11-01 |  | 29% | 5d | 28d |  |  |  | 96h | 44.8h |
| 40 | 4.1 | **Winch** | 3d | 2017-10-30 | 2017-11-01 |  |  |  | 21d |  |  | Matthew Swenson | 32h |  |
| 41 | 4.1.1 | Install | 2d | 2017-10-30 | 2017-10-31 | 7 |  |  | 29d |  |  |  |  |  |
| 42 | 4.1.2 | Enable | 2d | 2017-10-30 | 2017-10-31 | 7 |  |  | 21d | 0d |  | Matthew Swenson | 16h |  |
| 43 | 4.1.3 | ROS Node | 1d | 2017-11-01 | 2017-11-01 | 42 |  |  | 21d | 0d |  | Matthew Swenson | 8h |  |
| 44 | 4.2 | **Wheel Motors** | 2d | 2017-10-24 A | 2017-10-25 |  | 60% | 0.8d | 0d |  |  | Matthew Swenson; Daniel Arnett | 56h | 36.8h |
| 45 | 4.2.1 | Install | 1d | 2017-10-24 A | 2017-10-24 A |  | 100% |  |  |  |  |  |  |  |
| 46 | 4.2.2 | Enable | 1d | 2017-10-24 A | 2017-10-24 A |  | 100% |  |  |  |  | Daniel Arnett; Matthew Swenson | 16h | 16h |
| 47 | 4.2.3 | Wheel Motors PID Control | 2d | 2017-10-24 | 2017-10-25 |  |  |  | -1d | 0d |  | Dicong Qiu | 16h |  |
| 48 | 4.2.4 | ROS Node | 1d | 2017-10-25 A | 2017-10-25 A | 46 | 100% |  |  |  |  | Daniel Arnett; Matthew Swenson | 16h | 16h |

| ID | WBS | Task | Duration | Start | Finish | Predecessors | Complete | Remaining | Total slack | Free slack | Constraint | Resources | Work | Actual work |
| --- | --- | --- | --- | --- | --- | --- | --- | --- | --- | --- | --- | --- | --- | --- |
| 49 | 4.3 | **Magnet Controller** | 5d | 2017-10-24 A | 2017-10-30 |  | 25% | 3.75d | 30d |  |  |  | 8h | 8h |
| 50 | 4.3.1 | Install | 2d | 2017-10-27 | 2017-10-30 | 2 |  |  | 30d |  |  |  |  |  |
| 51 | 4.3.2 | Enable | 1d | 2017-10-24 A | 2017-10-24 A |  | 100% |  |  |  |  | Daniel Arnett | 8h | 8h |
| 52 | 4.3.3 | ROS Node | 1d | 2017-10-30 | 2017-10-30 | 51 |  |  | 23d | 2d | start no earlier than 2017-10-28 |  |  |  |
| 53 | 5 | **Theoretical Analysis** | 6d | 2017-10-26 | 2017-11-02 |  |  |  | 21d | 0d |  |  | 40h |  |
| 54 | 5.1 | Identify Rover Kinetic Constriants | 3d | 2017-10-26 | 2017-10-30 | 44 |  |  | 21d | 0d |  | Karthik Paga | 24h |  |
| 55 | 5.2 | Define Rover FK (Forward Kinematics) | 2d | 2017-10-31 | 2017-11-01 | 54 |  |  | 22d |  |  | Karthik Paga | 16h |  |
| 56 | 5.3 | Define Rover IK (Inverse Kinematics) | 3d | 2017-10-31 | 2017-11-02 | 54 |  |  | 21d |  |  |  |  |  |
| 57 | 6 | **Controller Software** | 34d | 2017-10-25 A | 2017-12-11 |  | 12% | 29.85d | 0d |  |  |  | 356h | 64.71h |
| 58 | 6.1 | **Locomotion** | 34d | 2017-10-25 A | 2017-12-11 |  | 20% | 27.2d | 0d |  |  |  | 244h | 64.71h |
| 59 | 6.1.1 | **Joystick Controller** | 2d | 2017-10-25 A | 2017-10-26 A | 44 | 100% |  |  |  |  | Matthew Swenson; Daniel Arnett | 40h | 40h |
| 60 | 6.1.1.1 | Enable Joystick | 1d | 2017-10-25 A | 2017-10-25 A |  | 100% |  |  |  |  | Daniel Arnett; Matthew Swenson | 16h | 16h |
| 61 | 6.1.1.2 | ROS Node | 1d | 2017-10-26 A | 2017-10-26 A | 60 | 100% |  |  |  |  | Daniel Arnett; Matthew Swenson | 16h | 16h |
| 62 | 6.1.2 | **Define Motion Primitives** | 3d | 2017-11-03 | 2017-11-07 | 53 |  |  | 21d | 0d |  | Abdul Zafar; Dicong Qiu | 56h |  |
| 63 | 6.1.2.1 | Joint Space Aspect Primitives | 1d | 2017-11-03 | 2017-11-03 |  |  |  | 21d | 0d |  | Abdul Zafar; Dicong Qiu | 16h |  |
| 64 | 6.1.2.2 | Task Space Aspect Primitives | 2d | 2017-11-06 | 2017-11-07 | 63 |  |  | 21d |  |  | Abdul Zafar; Dicong Qiu | 32h |  |
| 65 | 6.1.3 | **Path Planner** | 29d | 2017-11-01 A | 2017-12-11 |  | 18% | 23.88d | 0d |  |  | Abdul Zafar | 116h | 24.71h |
| 66 | 6.1.3.1 | Planning Scene | 5d | 2017-12-05 | 2017-12-11 |  |  |  | 0d |  | start no earlier than 2017-12-05 | Abdul Zafar | 40h |  |
| 67 | 6.1.3.2 | Simulation | 3d | 2017-11-01 A | 2017-11-03 A |  | 100% |  |  |  |  | Abdul Zafar | 24h | 24h |
| 68 | 6.1.3.3 | Core Planning Algorithm | 3d | 2017-11-06 | 2017-11-08 | 67 |  |  | 20d | 0d |  | Abdul Zafar | 24h |  |
| 69 | 6.1.3.4 | Global and Local Planning | 3d | 2017-12-05 | 2017-12-07 | 68 |  |  | 2d |  | start no earlier than 2017-12-05 |  |  |  |
| 70 | 6.1.3.5 | Informative Heuristics | 3d | 2017-11-09 | 2017-11-13 | 68 |  |  | 20d |  |  | Abdul Zafar | 24h |  |
| 71 | 6.1.4 | **Motion Controller** | 3d | 2017-11-08 | 2017-11-10 |  |  |  | 21d |  |  | Dicong Qiu | 32h |  |
| 72 | 6.1.4.1 | Path Waypoints Following | 3d | 2017-11-08 | 2017-11-10 | 62 |  |  | 21d |  |  | Dicong Qiu | 24h |  |

Notes:
- 55: Rover Ackermann Control Forward Kinematics
- 56: Rover Ackermann Control Inverse Kinematics
- 63: Primitives: - P_theta ( phi, theta ) = P_theta ( Theta ) - P_omega ( phi, omega, t ) where: - Theta: joint space value - phi: Ackermann steering angle - theta: wheel rotation angle - omega: wheel rotation angular speed - t: wheel rotation duration
- 64: Should always be able to be translated into: - either of the joint space aspect primitives; or - a sequence of the joint space aspect primitives. e.g. - P_1 = ( 1, 1, pi/4 ) = ( delta_X ) Task space to joint space: IK ( delta_X ) = Theta Execution: P_theta ( IK ( delta_X ) )

| ID | WBS | Task | Duration | Start | Finish | Predecessors | Total slack | Free slack | Constraint | Resources | Work |
| --- | --- | --- | --- | --- | --- | --- | --- | --- | --- | --- | --- |
| 73 | 6.2 | **Status Monitoring** | 4d | 2017-11-06 | 2017-11-09 |  | 22d |  | start no earlier than 2017-11-05 |  |  |
| 74 | 6.2.1 | Entrapment Detection | 3d | 2017-11-06 | 2017-11-08 |  | 22d | 0d |  |  |  |
| 75 | 6.2.2 | ROS Node | 1d | 2017-11-09 | 2017-11-09 | 74 | 22d |  |  |  |  |
| 76 | 6.3 | **Docking** | 7d | 2017-11-02 | 2017-11-10 | 43, 48, 52 | 21d |  | start no earlier than 2017-11-01 | Dicong Qiu | 64h |
| 77 | 6.3.1 | Demo Docking KISS Script | 2d | 2017-11-02 | 2017-11-03 |  | 21d | 0d |  | Dicong Qiu | 16h |
| 78 | 6.3.2 | Docking Planner | 5d | 2017-11-06 | 2017-11-10 | 77 | 21d |  |  | Dicong Qiu | 40h |
| 79 | 6.4 | **Towing** | 5d | 2017-11-02 | 2017-11-08 | 43, 48, 52 | 23d |  |  | Dicong Qiu | 48h |
| 80 | 6.4.1 | Demo Towing KISS Script | 2d | 2017-11-02 | 2017-11-03 |  | 23d | 0d |  | Dicong Qiu | 16h |
| 81 | 6.4.2 | Towing Planner | 3d | 2017-11-06 | 2017-11-08 | 80 | 23d |  |  | Dicong Qiu | 24h |
| 82 | 7 | Project Management | 1d? | 2017-10-24 | 2017-10-24 |  | 35d |  |  |  |  |
| 83 | 8 | FVE (Fall Validation) | 1d? | 2017-12-12 | 2017-12-12 | 1, 8, 10, 39, 53, 57 | 0d |  | start no earlier than 2017-10-24 |  |  |

Notes:
- 80: KISS = Keep It Simple and Stupid
